# openETCS-sutbask

Schedule from MS Project, 2012-10-10 to 2014-03-19.

## Calendars

- Standard: Mon-Fri 08:00-12:00, 13:00-17:00; Sat-Sun off.

## Schedule

| ID | WBS | Task | Type | Duration | Start | Finish | Predecessors | Total slack | Free slack | Constraint |
| --- | --- | --- | --- | --- | --- | --- | --- | --- | --- | --- |
| 1 | 1 | **WP2** |  | 60d | 2012-10-10 | 2013-01-01 |  | 16d |  |  |
| 2 | 1.1 | WP2 dummy |  | 3mo | 2012-10-10 | 2013-01-01 |  | 16d | 0d | finish no earlier than 2013-01-01 |
| 3 | 1.2 | WP2: Small representative subset of ERTMS requirements in order to evaluate tools/languages | milestone | 0d | 2013-01-01 | 2013-01-01 | 2 | 16d | 0d |  |
| 4 | 1.3 | WP2: List of suitable means of description | milestone | 0d | 2013-01-01 | 2013-01-01 | 2 | 16d | 0d |  |
| 5 | 1.4 | WP2: List of suitable tools (based on State of the Art Analysis) | milestone | 0d | 2013-01-01 | 2013-01-01 | 2 | 176d | 80d |  |
| 6 | 1.5 | WP2: List of target platforms, based on the tools being evaluated (1.2) | milestone | 0d | 2013-01-01 | 2013-01-01 | 2 | 96d | 80d |  |
| 7 | 1.6 | WP2: Preliminary requirements | milestone | 0d | 2013-01-01 | 2013-01-01 | 2 | 16d | 0d |  |
| 8 | 1.7 | WP2: Requirements | milestone | 0d | 2013-01-01 | 2013-01-01 | 2 | 16d | 0d |  |
| 9 | 1.8 | WP2: Definition of method / process | milestone | 0d | 2013-01-01 | 2013-01-01 | 2 | 156d | 80d |  |
| 10 | 2 | **WP7: Toolchain** |  | 316d | 2013-01-02 | 2014-03-19 |  | 0d |  |  |
| 11 | 2.1 | **7.1 - Primary Tool Chain Analyses and Recommendations** |  | 140d | 2013-01-02 | 2013-07-16 |  | 16d |  |  |
| 12 | 2.1.1 | **T7.1.1. - Identify and define the potential means of description** |  | 120d | 2013-01-02 | 2013-06-18 | 4, 3, 7, 8 | 16d |  |  |
| 13 | 2.1.1.1 | O7.1.1 Formal Model representing the sample spec, one for each candidate |  | 4mo | 2013-01-02 | 2013-04-23 |  | 196d | 0d | start no earlier than 2013-01-01 |
| 14 | 2.1.1.2 | O7.1.2 Documentation of the changes to each means of description used (if any) |  | 1mo | 2013-04-24 | 2013-05-21 | 13 | 216d |  |  |
| 15 | 2.1.1.3 | O7.1.3 Evaluation of the models against the WP2 requirements |  | 1mo | 2013-04-24 | 2013-05-21 | 13 | 196d | 0d |  |
| 16 | 2.1.1.4 | O7.1.4 Decision on the final means of description choice(s) |  | 1mo | 2013-05-22 | 2013-06-18 | 15 | 196d | 0d |  |
| 17 | 2.1.2 | **T7.1.2 - Identify and compare existing modelling tools** |  | 60d | 2013-04-24 | 2013-07-16 | 5, 7, 8 | 76d |  |  |
| 18 | 2.1.2.1 | O7.1.6 Documentation of the changes to each tool (if any) |  | 1mo | 2013-04-24 | 2013-05-21 | 13 | 296d | 216d |  |
| 19 | 2.1.2.2 | O7.1.7 Evaluation of the tools against the WP2 requirements |  | 1mo | 2013-04-24 | 2013-05-21 | 13 | 276d | 20d |  |
| 20 | 2.1.2.3 | D7.1 Report on the final choice(s) for the primary tool chain (means of description, tool and platform) |  | 1mo | 2013-06-19 | 2013-07-16 | 19, 16 | 256d | 20d |  |
| 21 | 2.1.3 | **T7.1.3 Identify the tool platform** |  | 40d | 2013-04-24 | 2013-06-18 | 6, 7, 8 | 16d |  |  |
| 22 | 2.1.3.1 | O7.1.9 Evaluation of each tool platform against WP2 requirements, independent of target tool |  | 1mo | 2013-04-24 | 2013-05-21 | 13 | 196d | 0d |  |
| 23 | 2.1.3.2 | O7.1.10 Evaluation of tool platform in the context of specific target tools |  | 1mo | 2013-04-24 | 2013-05-21 | 13 | 196d | 0d |  |
| 24 | 2.1.3.3 | O7.1.11 Selection of Tool Platform (and reasoning) |  | 1mo | 2013-05-22 | 2013-06-18 | 23, 22 | 196d | 40d |  |

| ID | WBS | Task | Duration | Start | Finish | Predecessors | Total slack | Free slack |
| --- | --- | --- | --- | --- | --- | --- | --- | --- |
| 25 | 2.2 | **T7.2 - Secondary Tools Analyses and Recommendations** | 124d | 2013-04-18 | 2013-10-08 |  | 0d |  |
| 26 | 2.2.1 | **T7.2.1 - Identify and define the supporting tools and methods** | 80d | 2013-04-24 | 2013-08-13 | 4, 3, 7, 9, 16FS-3mo, 13 | 156d |  |
| 27 | 2.2.1.1 | O7.2.1 Evaluation of supporting tools and methods against the WP2 requirements and task 1 choices | 3mo | 2013-04-24 | 2013-07-16 | 13 | 336d | 0d |
| 28 | 2.2.1.2 | D7.2 Report on all aspects of secondary tooling (results of T7.2) | 1mo | 2013-07-17 | 2013-08-13 | 27 | 336d | 0d |
| 29 | 2.2.2 | **T7.2.2 - Model Transformation and Code Generation** | 80d | 2013-06-19 | 2013-10-08 | 8, 16 | 16d |  |
| 30 | 2.2.2.1 | O7.2.3 Model Transformation Strategy | 4mo | 2013-06-19 | 2013-10-08 |  | 196d | 116d |
| 31 | 2.2.2.2 | O7.2.4 Code Generation Strategy | 4mo | 2013-06-19 | 2013-10-08 |  | 196d | 116d |
| 32 | 2.2.3 | **T7.2.3 - Requirement traceability** | 80d | 2013-06-19 | 2013-10-08 | 8, 16 | 36d |  |
| 33 | 2.2.3.1 | O7.2.5 Captured and organized designer requirements | 4mo | 2013-06-19 | 2013-10-08 |  | 216d | 0d |
| 34 | 2.2.4 | **T7.2.4 - Validation and Verification Tools** | 60d | 2013-04-18 | 2013-07-10 | 8, 57, 61 | 0d |  |
| 35 | 2.2.4.1 | O7.2.6 V&V tool choice | 3mo | 2013-04-18 | 2013-07-10 |  | 0d |  |
| 36 | 2.2.4.2 | O7.2.7 Test automation tool choice with experience report | 3mo | 2013-04-18 | 2013-07-10 |  | 80d | 64d |
| 37 | 2.2.5 | **T7.2.5 - Safety analyses Tools** | 100d | 2013-04-24 | 2013-09-10 | 8, 62, 13 | 136d |  |
| 38 | 2.2.5.1 | O7.2.8 Safety analyses tools choices | 5mo | 2013-04-24 | 2013-09-10 |  | 316d |  |
| 39 | 2.3 | **T7.3 - Define and Develop Tool Chain** | 120d | 2013-06-19 | 2013-12-03 |  | 16d |  |
| 40 | 2.3.1 | **T7.3.1 - Overall Tool Architecture** | 84d | 2013-07-11 | 2013-11-05 | 13, 14, 16, 15, 24, 35 | 0d |  |
| 41 | 2.3.1.1 | O7.3.1 Tool chain development plan (or equivalent) | 1mo | 2013-10-09 | 2013-11-05 | 18, 30, 31, 35, 36, 20 | 16d | 0d |
| 42 | 2.3.1.2 | O7.3.2 Specification of tool interoperability mechanisms | 1mo | 2013-07-11 | 2013-08-07 |  | 80d | 64d |
| 43 | 2.3.1.3 | O7.3.3 Guideline for developing the tool chain according to CELENEC | 3mo | 2013-07-11 | 2013-10-02 |  | 0d |  |
| 44 | 2.3.2 | **T7.3.2 - Development Infrastructure** | 40d | 2013-06-19 | 2013-08-13 | 9, 33SS | 36d |  |
| 45 | 2.3.2.1 | O7.3.3 Specification of primary and support tool chain architecture and its embedding into the platform | 1mo | 2013-06-19 | 2013-07-16 |  | 276d |  |
| 46 | 2.3.2.2 | O7.3.4 Infrastructure evolution strategy | 2mo | 2013-06-19 | 2013-08-13 |  | 216d | 0d |
| 47 | 2.3.3 | **T7.3.3 - Decomposition and Distribution of work** | 40d | 2013-08-14 | 2013-10-08 | 24, 46 | 36d | 20d |
| 48 | 2.3.3.1 | O7.3.6 Tool chain qualification test suite | 1mo | 2013-08-14 | 2013-09-10 |  | 236d | 20d |
| 49 | 2.3.3.2 | D7.3 Tool Chain Qualification Process Description | 2mo | 2013-08-14 | 2013-10-08 |  | 216d | 0d |

| ID | WBS | Task | Type | Duration | Start | Finish | Predecessors | Total slack | Free slack | Constraint |
| --- | --- | --- | --- | --- | --- | --- | --- | --- | --- | --- |
| 50 | 2.3.4 | **T7.3.4 - Tool chain development** |  | 20d | 2013-11-06 | 2013-12-03 | 41, 42, 46, 48, 53SS | 16d |  |  |
| 51 | 2.3.4.1 | D7.4 Tool chain first release |  | 1mo | 2013-11-06 | 2013-12-03 | 40, 44, 47 | 16d | 0d |  |
| 52 | 2.4 | **T7.4 - Develop Open Source Ecosystem** |  | 208d | 2013-06-01 | 2014-03-19 |  | 0d |  |  |
| 53 | 2.4.1 | T7.4.1 - Develop Open Source Ecosystem |  | 6mo | 2013-10-03 | 2014-03-19 | 43 | 0d |  | start no earlier than 2012-07-01 |
| 54 | 2.4.2 | D7.5 Ecosystem Artefacts | milestone | 0d | 2013-06-01 | 2013-06-01 |  | 388d | 52d | finish no earlier than 2013-06-01 |
| 55 | 3 | **WP3** |  | 284d | 2013-01-24 | 2014-02-25 |  | 16d |  |  |
| 56 | 3.1 | WP3 dummy (Outputs for WP7) |  | 12mo | 2013-01-24 | 2013-12-25 |  | 60d | 0d |  |
| 57 | 3.2 | WP3 formalized API | milestone | 0d | 2013-01-24 | 2013-01-24 | 56SS | 60d |  |  |
| 58 | 3.3 | WP3 dummy (Inputs from WP7) |  | 3mo | 2013-12-04 | 2014-02-25 | 51 | 16d |  |  |
| 59 | 4 | **WP4** |  | 244d? | 2013-01-24 | 2013-12-31 |  | 0d |  |  |
| 60 | 4.1 | WP4 dummy (Outputs for WP7) |  | 3mo | 2013-01-24 | 2013-04-17 |  | 0d |  |  |
| 61 | 4.2 | WP4: Those sufficient elements of WP4 V&V Plan to evaluate tools | milestone | 0d | 2013-04-17 | 2013-04-17 | 60 | 0d |  |  |
| 62 | 4.3 | WP4: Those sufficient elements of WP4 Safety case to evaluate tools | milestone | 0d | 2013-04-17 | 2013-04-17 | 60 | 140d | 4d |  |
| 63 | 4.4 | WP4 dummy (Inputs from WP7) |  | 3mo? | 2013-10-09 | 2013-12-31 | 48, 49 | 56d |  |  |
| 64 | 5 | itea | milestone | 0d | 2013-08-13 | 2013-08-13 | 20, 54, 28 | 336d |  |  |
